# FCMP++/Carrot Plan

Schedule from Planner, 2026-07-22 to 2027-03-04.
The Monero Project

## Calendars

- Default: Mon-Fri 08:00-12:00, 13:00-17:00; Sat-Sun off.

## Schedule

| ID | Task | Duration | Start | Finish | Predecessors | Complete | Constraint | Work |
| --- | --- | --- | --- | --- | --- | --- | --- | --- |
| 1 | Circuit + Gadget Library Audit | 20d | 2026-07-29 | 2026-08-25 |  |  | start no earlier than 2026-07-29 | 160h |
| 2 | FCMP++ Phase 2 audit | 20d | 2026-07-29 | 2026-08-25 |  |  | start no earlier than 2026-07-29 | 160h |
| 3 | FCMP++ Phase 3 audit | 20d | 2026-08-26 | 2026-09-22 | 2 |  |  | 160h |
| 4 | FCMP++ further integretion audit? | 40d | 2026-08-26 | 2026-10-20 | 1 |  |  | 320h |
| 5 | FCMP++ Phase 1b merges | 4.75d | 2026-07-22 | 2026-07-28 |  |  |  | 38h |
| 6 | FCMP++ Phase 2 merges | 10d | 2026-07-28 | 2026-08-11 | 5 |  |  | 80h |
| 7 | FCMP++ Phase 3 merges | 5d | 2026-08-11 | 2026-08-18 | 6 |  |  | 40h |
| 8 | mx25519 unclamped + other PRs | 2d | 2026-07-22 | 2026-07-23 |  |  |  | 16h |
| 9 | Generator T,U,V fix merges | 1d | 2026-07-23 | 2026-07-23 |  |  | start no earlier than 2026-07-23 | 8h |
| 10 | mx25519 merge | 3d | 2026-07-24 | 2026-07-28 | 8 |  |  | 24h |
| 11 | carrot_core merge | 5d | 2026-07-29 | 2026-08-04 | 9, 10 |  |  | 40h |
| 12 | UkoeHB's carrot_impl review | 2d | 2026-07-22 | 2026-07-23 |  |  |  | 16h |
| 13 | carrot_impl merge | 5d | 2026-08-05 | 2026-08-11 | 12, 11 |  |  | 40h |
| 14 | carrot-fcmp integration merges | 5d | 2026-08-12 | 2026-08-18 | 13 |  |  | 40h |
| 15 | RandomX v2 + intermediate merge | 5d | 2026-07-22 | 2026-07-28 |  |  |  | 40h |
| 16 | TX relay v2 double-spend debug | 5d | 2026-07-22 | 2026-07-28 |  |  |  | 40h |
| 17 | TX relay v2 merge | 10d | 2026-07-29 | 2026-08-11 | 16 |  |  | 80h |
| 18 | HF activation merge | 1d | 2026-08-19 | 2026-08-19 | 17, 15, 14, 7 | 22% |  | 8h |
| 19 | Pre-release code freeze | 20d | 2026-08-20 | 2026-09-16 | 18 |  |  | 160h |
| 20 | First HF-enabled binary release | 5d | 2026-09-17 | 2026-09-23 | 19, 18 |  |  | 40h |
| 21 | HF mandatory waiting period | 120d | 2026-09-17 | 2027-03-03 | 19, 18 |  |  | 960h |
| 22 | Circuit + Gadget follow-up dev | 10d | 2026-08-26 | 2026-09-08 | 1 |  |  | 80h |
| 23 | FCMP++ integration follow-up dev | 10d | 2026-10-21 | 2026-11-03 | 3, 4, 22 |  |  | 80h |
| 24 | Follow-up fix binary release | 5d | 2026-11-04 | 2026-11-10 | 23 |  |  | 40h |
| 25 | Trezor HW dev | 90d | 2026-07-22 | 2026-11-24 |  |  |  | 720h |
| 26 | Trezor HW merges | 5d | 2026-11-25 | 2026-12-01 | 25 |  |  | 40h |
| 27 | Ledger HW dev | 90d | 2026-07-22 | 2026-11-24 |  |  |  | 720h |
| 28 | Ledger HW merges | 5d | 2026-11-25 | 2026-12-01 | 27 |  |  | 40h |
| 29 | Multisig dev | 45d | 2026-07-22 | 2026-09-22 |  |  |  | 360h |
| 30 | Multisig merges | 1d | 2026-09-23 | 2026-09-23 | 29 |  |  | 8h |
| 31 | Hot-cold dev | 5d | 2026-07-22 | 2026-07-28 |  |  |  | 40h |
| 32 | Hot-cold merges | 5d | 2026-07-29 | 2026-08-04 | 31 |  |  | 40h |
| 33 | Wallet knowledge dev | 5d | 2026-07-29 | 2026-08-04 | 31 |  |  | 40h |
| 34 | Wallet knowledge merges | 5d | 2026-08-05 | 2026-08-11 | 33 |  |  | 40h |
| 35 | Fully-featured merge | 1d | 2026-12-02 | 2026-12-02 | 23, 34, 32, 18, 30, 28, 26 |  |  | 8h |
| 36 | Fully-featured binary release | 5d | 2026-12-03 | 2026-12-09 | 35 |  |  | 40h |
| 37 | Pre-activation code freeze | 60d | 2026-12-03 | 2027-02-24 | 35 |  |  | 480h |
| 38 | FCMP++ activation | 1d | 2027-03-04 | 2027-03-04 | 37, 21 |  |  | 8h |

Notes:
- 12: https://github.com/seraphis-migration/monero/pull/427
